# Tareas

How a schedule from MS Project changed from version to version. A marks actual dates.

## Version 1 (saved 2017-03-24)

Note of the change: Primera Fase

| ID | WBS | Task | Duration | Start | Finish | Predecessors | Total float |
| --- | --- | --- | --- | --- | --- | --- | --- |
| 1 | 1 | **TOTAL PROYECTO** | 26d | 2017-03-24 | 2017-04-28 |  | 0d |
| 2 | 1.1 | **FASE 1: PREPARACION PARA LA FORMULACION** | 26d | 2017-03-24 | 2017-04-28 |  | 0d |
| 3 |  | INICIO | 0d | 2017-03-24 | 2017-03-24 |  | 0d |
| 4 |  | TERMINOS DE REFERENCIA. Objetivos. Condicionantes del Promotor | 10d | 2017-03-24 | 2017-04-06 | 3 | 0d |
| 5 |  | FINANCIACION | 7d | 2017-03-24 | 2017-04-03 | 3 | 4d |
| 6 |  | COMITÉ DE COORDINACION. Constitución y organización | 5d | 2017-03-24 | 2017-03-30 | 3 | 21d |
| 7 |  | EQUIPO DE FORMULACION. Recursos humanos y técnicos | 15d | 2017-04-04 | 2017-04-24 | 5 | 4d |
| 8 |  | METODOLOGIA Y PLAN DE TRABAJO | 10d | 2017-04-07 | 2017-04-20 | 4 | 0d |
| 9 |  | DOC. Nº1: Fin P.F. | 5d | 2017-04-21 | 2017-04-27 | 8 | 0d |
| 10 |  | Entrega al PROMOTOR. Doc. nº1 | 0d | 2017-04-27 | 2017-04-27 | 9 | 0d |
| 11 |  | SEMINARIO DE LANZAMIENTO DEL PROYECTO | 1d | 2017-04-28 | 2017-04-28 | 10 | 0d |

## Version 2 (saved 2017-03-24)

Note of the change: Ampliacion a segunda fase

Last finish 2017-04-28 → 2017-09-07 (+132d).

Added:

| ID | Task | Duration | Start | Finish | Predecessors |
| --- | --- | --- | --- | --- | --- |
| 12 | **FASE 2: ANALISIS Y DIAGNOSTICO** | 94d | 2017-05-01 | 2017-09-07 |  |
| 13 | **ANALISIS ANTECEDENTES** | 15d | 2017-05-01 | 2017-05-19 | 11 |
| 14 | POLITICAS Y PROGRAMAS | 10d | 2017-05-01 | 2017-05-12 | 11 |
| 15 | MARCO LEGAL | 15d | 2017-05-01 | 2017-05-19 | 11 |
| 16 | BASES DE DATOS EXISTENTES | 7d | 2017-05-01 | 2017-05-09 | 11 |
| 17 | **ANALISIS DEL AREA DEL PROYECTO** | 80d | 2017-05-10 | 2017-08-29 | 11, 16 |
| 18 | ANALISIS DE RECURSOS NATURALES. INVENTARIO AMBIENTAL | 35d | 2017-05-10 | 2017-06-27 |  |
| 19 | INFRAESTRUCTURAS Y SERVICIOS | 20d | 2017-06-28 | 2017-07-25 | 18 |
| 20 | ANALISIS DE SECTORES PRODUCTIVOS | 25d | 2017-07-26 | 2017-08-29 | 14, 13, 15, 19 |
| 21 | ANALISIS POBLACIONAL | 20d | 2017-05-10 | 2017-06-06 |  |
| 22 | SISTEMA GENERAL TERRITORIAL DE INFORMACION | 21d | 2017-05-10 | 2017-06-07 | 16 |
| 23 | **ANALISIS DE AGENTES Y PARTICIPACION** | 82d | 2017-05-17 | 2017-09-07 |  |
| 24 | IDENTIFICACIÓN DE AGENTES Y TIPOLOGIA | 10d | 2017-05-17 | 2017-05-30 | 22SS+5d |
| 25 | ANALISIS DE LA PARTICIPACIÓN: ENCUESTA CON LOS AGENTES | 60d | 2017-05-31 | 2017-08-22 | 24 |
| 26 | TALLER DE PARTICIPACIÓN AGENTES PUBLICOS | 1d | 2017-06-14 | 2017-06-14 | 25SS+10d |
| 27 | ANALISIS PROSPECTIVO "SIN" | 6d | 2017-06-15 | 2017-06-22 | 26 |
| 28 | INFORME DE PARTICIPACION: Problemas, necesidades, oportunidades | 10d | 2017-08-23 | 2017-09-05 | 27, 25 |
| 29 | PRESENTACIÓN Y VALIDACION DE CONCLUSIONES | 2d | 2017-09-06 | 2017-09-07 | 28 |
| 30 | CONCLUSIONES Y Doc. Nº2. Presentación al PROMOTOR | 0d | 2017-09-07 | 2017-09-07 | 29 |
| 31 | Doc. nº2. REVISIÓN POR EL PROMOTOR | 0d | 2017-09-07 | 2017-09-07 | 29, 30 |

Changed:

| ID | Task | Finish | Duration |
| --- | --- | --- | --- |
| 1 | **TOTAL PROYECTO** | 2017-04-28 → 2017-09-07 (+132d) | 26d → 120d |

## Version 3 (saved 2017-03-24)

Note of the change: Ampliacion a tercera fase

Last finish 2017-09-07 → 2018-01-15 (+130d).

Added:

| ID | Task | Duration | Start | Finish | Predecessors |
| --- | --- | --- | --- | --- | --- |
| 32 | **FASE 3: DISEÑO DEL PROYECTO** | 92d | 2017-09-08 | 2018-01-15 |  |
| 33 | OBJETIVOS Y METAS | 1d | 2017-09-08 | 2017-09-08 | 31 |
| 34 | ALTERNATIVA ESTRATEGICAS: ANÁLISIS Y SELECCIÓN | 7d | 2017-09-11 | 2017-09-19 | 33 |
| 35 | FORMULACION DE LOS COMPONENTES | 60d | 2017-09-20 | 2017-12-12 | 34 |
| 36 | DISEÑO DE LA ORGANIZACIÓN | 10d | 2017-12-13 | 2017-12-26 | 35 |
| 37 | SISTEMA DE SEGUIMIENTO Y EVALUACION. Programación de la ejecución | 7d | 2017-12-27 | 2018-01-04 | 36, 35 |
| 38 | PRESUPUESTACION | 4d | 2017-12-27 | 2018-01-01 | 35, 36 |
| 39 | Doc. Nº 3. Entrega al PROMOTOR | 0d | 2018-01-01 | 2018-01-01 | 38 |
| 40 | Doc. Nº 3. REVISION POR EL PROMOTOR | 10d | 2018-01-02 | 2018-01-15 | 39 |

Changed:

| ID | Task | Finish | Duration |
| --- | --- | --- | --- |
| 1 | **TOTAL PROYECTO** | 2017-09-07 → 2018-01-15 (+130d) | 120d → 212d |

## Version 4 (saved 2017-03-24)

Note of the change: Ampliacion a cuarta fase

Last finish 2018-01-15 → 2018-02-05 (+21d).

Added:

| ID | Task | Duration | Start | Finish | Predecessors |
| --- | --- | --- | --- | --- | --- |
| 41 | **FASE 4: EVALUACION MULTICRITERIO** | 15d | 2018-01-16 | 2018-02-05 |  |
| 42 | EVALUACION ECONOMICO-FINANCIERA | 10d | 2018-01-16 | 2018-01-29 | 40 |
| 43 | EVALUACION SOCIAL Y CULTURAL | 10d | 2018-01-16 | 2018-01-29 | 40 |
| 44 | EVALUACION AMBIENTAL | 10d | 2018-01-16 | 2018-01-29 | 40 |
| 45 | EVALUACION DE RIESGOS, SEGURIDAD Y SALUD DEL PROYECTO | 10d | 2018-01-16 | 2018-01-29 | 40 |
| 46 | Entrega Doc. nº 4. VIABILIDAD Y SOSTENIBLIDAD | 0d | 2018-01-29 | 2018-01-29 | 45 |
| 47 | Revisión Doc. nº 4 | 5d | 2018-01-30 | 2018-02-05 | 42, 43, 44 |

Changed:

| ID | Task | Finish | Duration |
| --- | --- | --- | --- |
| 1 | **TOTAL PROYECTO** | 2018-01-15 → 2018-02-05 (+21d) | 212d → 227d |

## Version 5 (saved 2017-03-24)

Note of the change: Ampliacion a quinta fase

Last finish 2018-02-05 → 2018-02-19 (+14d).

Added:

| ID | Task | Duration | Start | Finish | Predecessors |
| --- | --- | --- | --- | --- | --- |
| 48 | **FASE 5: DOCUMENTACION** | 10d | 2018-02-06 | 2018-02-19 |  |
| 49 | MEMORIA | 6d | 2018-02-06 | 2018-02-13 | 47 |
| 50 | ANEJOS A LA MEMORIA | 10d | 2018-02-06 | 2018-02-19 | 47 |
| 51 | PLANOS | 10d | 2018-02-06 | 2018-02-19 | 47 |
| 52 | PLIEGO DE CONDICIONES | 3d | 2018-02-06 | 2018-02-08 | 47 |
| 53 | PRESUPUESTO | 3d | 2018-02-06 | 2018-02-08 | 47 |
| 54 | ESTUDIO DE SEGURIDAD Y SALUD | 10d | 2018-02-06 | 2018-02-19 | 47 |
| 55 | Entrega del proyecto | 0d | 2018-02-19 | 2018-02-19 | 54, 49, 50, 51, 52, 53 |

Changed:

| ID | Task | Finish | Duration |
| --- | --- | --- | --- |
| 1 | **TOTAL PROYECTO** | 2018-02-05 → 2018-02-19 (+14d) | 227d → 237d |

## Version 6 (saved 2017-03-24)

Note of the change: Correccion Predecesoras Fase 1

Last finish 2018-02-19 → 2018-02-26 (+7d).

Changed:

| ID | Task | Start | Finish | Duration | Total float | Predecessors |
| --- | --- | --- | --- | --- | --- | --- |
| 1 | **TOTAL PROYECTO** |  | 2018-02-19 → 2018-02-26 (+7d) | 237d → 242d |  |  |
| 2 | **FASE 1: PREPARACION PARA LA FORMULACION** |  | 2017-04-28 → 2017-05-05 (+7d) | 26d → 31d |  |  |
| 7 | EQUIPO DE FORMULACION. Recursos humanos y técnicos | 2017-04-04 → 2017-03-31 (-4d) | 2017-04-24 → 2017-04-20 (-4d) |  | 98d → 0d | 5 → 4SS, 6 |
| 8 | METODOLOGIA Y PLAN DE TRABAJO | 2017-04-07 → 2017-04-14 (+7d) | 2017-04-20 → 2017-04-27 (+7d) |  |  | 4 → 4, 7FS-5d, 5, 6SS |
| 9 | DOC. Nº1: Fin P.F. | 2017-04-21 → 2017-04-28 (+7d) | 2017-04-27 → 2017-05-04 (+7d) |  |  |  |
| 10 | Entrega al PROMOTOR. Doc. nº1 | 2017-04-27 → 2017-05-04 (+7d) | 2017-04-27 → 2017-05-04 (+7d) |  |  |  |
| 11 | SEMINARIO DE LANZAMIENTO DEL PROYECTO | 2017-04-28 → 2017-05-05 (+7d) | 2017-04-28 → 2017-05-05 (+7d) |  |  |  |
| 12 | **FASE 2: ANALISIS Y DIAGNOSTICO** | 2017-05-01 → 2017-05-08 (+7d) | 2017-09-07 → 2017-09-14 (+7d) |  |  |  |
| 13 | **ANALISIS ANTECEDENTES** | 2017-05-01 → 2017-05-08 (+7d) | 2017-05-19 → 2017-05-26 (+7d) |  |  |  |
| 14 | POLITICAS Y PROGRAMAS | 2017-05-01 → 2017-05-08 (+7d) | 2017-05-12 → 2017-05-19 (+7d) |  | 59d → 176d |  |
| 15 | MARCO LEGAL | 2017-05-01 → 2017-05-08 (+7d) | 2017-05-19 → 2017-05-26 (+7d) |  | 54d → 171d |  |
| 16 | BASES DE DATOS EXISTENTES | 2017-05-01 → 2017-05-08 (+7d) | 2017-05-09 → 2017-05-16 (+7d) |  |  |  |
| 17 | **ANALISIS DEL AREA DEL PROYECTO** | 2017-05-10 → 2017-05-17 (+7d) | 2017-08-29 → 2017-09-05 (+7d) |  |  |  |
| 18 | ANALISIS DE RECURSOS NATURALES. INVENTARIO AMBIENTAL | 2017-05-10 → 2017-05-17 (+7d) | 2017-06-27 → 2017-07-04 (+7d) |  | 7d → 124d |  |
| 19 | INFRAESTRUCTURAS Y SERVICIOS | 2017-06-28 → 2017-07-05 (+7d) | 2017-07-25 → 2017-08-01 (+7d) |  | 7d → 124d |  |
| 20 | ANALISIS DE SECTORES PRODUCTIVOS | 2017-07-26 → 2017-08-02 (+7d) | 2017-08-29 → 2017-09-05 (+7d) |  | 7d → 124d |  |
| 21 | ANALISIS POBLACIONAL | 2017-05-10 → 2017-05-17 (+7d) | 2017-06-06 → 2017-06-13 (+7d) |  | 67d → 184d |  |
| 22 | SISTEMA GENERAL TERRITORIAL DE INFORMACION | 2017-05-10 → 2017-05-17 (+7d) | 2017-06-07 → 2017-06-14 (+7d) |  |  |  |
| 23 | **ANALISIS DE AGENTES Y PARTICIPACION** | 2017-05-17 → 2017-05-24 (+7d) | 2017-09-07 → 2017-09-14 (+7d) |  |  |  |
| 24 | IDENTIFICACIÓN DE AGENTES Y TIPOLOGIA | 2017-05-17 → 2017-05-24 (+7d) | 2017-05-30 → 2017-06-06 (+7d) |  |  |  |
| 25 | ANALISIS DE LA PARTICIPACIÓN: ENCUESTA CON LOS AGENTES | 2017-05-31 → 2017-06-07 (+7d) | 2017-08-22 → 2017-08-29 (+7d) |  |  |  |
| 26 | TALLER DE PARTICIPACIÓN AGENTES PUBLICOS | 2017-06-14 → 2017-06-21 (+7d) | 2017-06-14 → 2017-06-21 (+7d) |  |  |  |
| 27 | ANALISIS PROSPECTIVO "SIN" | 2017-06-15 → 2017-06-22 (+7d) | 2017-06-22 → 2017-06-29 (+7d) |  |  |  |
| 28 | INFORME DE PARTICIPACION: Problemas, necesidades, oportunidades | 2017-08-23 → 2017-08-30 (+7d) | 2017-09-05 → 2017-09-12 (+7d) |  |  |  |
| 29 | PRESENTACIÓN Y VALIDACION DE CONCLUSIONES | 2017-09-06 → 2017-09-13 (+7d) | 2017-09-07 → 2017-09-14 (+7d) |  |  |  |
| 30 | CONCLUSIONES Y Doc. Nº2. Presentación al PROMOTOR | 2017-09-07 → 2017-09-14 (+7d) | 2017-09-07 → 2017-09-14 (+7d) |  |  |  |
| 31 | Doc. nº2. REVISIÓN POR EL PROMOTOR | 2017-09-07 → 2017-09-14 (+7d) | 2017-09-07 → 2017-09-14 (+7d) |  |  |  |
| 32 | **FASE 3: DISEÑO DEL PROYECTO** | 2017-09-08 → 2017-09-15 (+7d) | 2018-01-15 → 2018-01-22 (+7d) |  |  |  |
| 33 | OBJETIVOS Y METAS | 2017-09-08 → 2017-09-15 (+7d) | 2017-09-08 → 2017-09-15 (+7d) |  |  |  |
| 34 | ALTERNATIVA ESTRATEGICAS: ANÁLISIS Y SELECCIÓN | 2017-09-11 → 2017-09-18 (+7d) | 2017-09-19 → 2017-09-26 (+7d) |  |  |  |
| 35 | FORMULACION DE LOS COMPONENTES | 2017-09-20 → 2017-09-27 (+7d) | 2017-12-12 → 2017-12-19 (+7d) |  |  |  |
| 36 | DISEÑO DE LA ORGANIZACIÓN | 2017-12-13 → 2017-12-20 (+7d) | 2017-12-26 → 2018-01-02 (+7d) |  |  |  |
| 37 | SISTEMA DE SEGUIMIENTO Y EVALUACION. Programación de la ejecución | 2017-12-27 → 2018-01-03 (+7d) | 2018-01-04 → 2018-01-11 (+7d) |  | 22d → 32d |  |
| 38 | PRESUPUESTACION | 2017-12-27 → 2018-01-03 (+7d) | 2018-01-01 → 2018-01-08 (+7d) |  |  |  |
| 39 | Doc. Nº 3. Entrega al PROMOTOR | 2018-01-01 → 2018-01-08 (+7d) | 2018-01-01 → 2018-01-08 (+7d) |  |  |  |
| 40 | Doc. Nº 3. REVISION POR EL PROMOTOR | 2018-01-02 → 2018-01-09 (+7d) | 2018-01-15 → 2018-01-22 (+7d) |  |  |  |
| 41 | **FASE 4: EVALUACION MULTICRITERIO** | 2018-01-16 → 2018-01-23 (+7d) | 2018-02-05 → 2018-02-12 (+7d) |  |  |  |
| 42 | EVALUACION ECONOMICO-FINANCIERA | 2018-01-16 → 2018-01-23 (+7d) | 2018-01-29 → 2018-02-05 (+7d) |  |  |  |
| 43 | EVALUACION SOCIAL Y CULTURAL | 2018-01-16 → 2018-01-23 (+7d) | 2018-01-29 → 2018-02-05 (+7d) |  |  |  |
| 44 | EVALUACION AMBIENTAL | 2018-01-16 → 2018-01-23 (+7d) | 2018-01-29 → 2018-02-05 (+7d) |  |  |  |
| 45 | EVALUACION DE RIESGOS, SEGURIDAD Y SALUD DEL PROYECTO | 2018-01-16 → 2018-01-23 (+7d) | 2018-01-29 → 2018-02-05 (+7d) |  | 5d → 15d |  |
| 46 | Entrega Doc. nº 4. VIABILIDAD Y SOSTENIBLIDAD | 2018-01-29 → 2018-02-05 (+7d) | 2018-01-29 → 2018-02-05 (+7d) |  | 5d → 15d |  |
| 47 | Revisión Doc. nº 4 | 2018-01-30 → 2018-02-06 (+7d) | 2018-02-05 → 2018-02-12 (+7d) |  |  |  |
| 48 | **FASE 5: DOCUMENTACION** | 2018-02-06 → 2018-02-13 (+7d) | 2018-02-19 → 2018-02-26 (+7d) |  |  |  |
| 49 | MEMORIA | 2018-02-06 → 2018-02-13 (+7d) | 2018-02-13 → 2018-02-20 (+7d) |  |  |  |
| 50 | ANEJOS A LA MEMORIA | 2018-02-06 → 2018-02-13 (+7d) | 2018-02-19 → 2018-02-26 (+7d) |  |  |  |
| 51 | PLANOS | 2018-02-06 → 2018-02-13 (+7d) | 2018-02-19 → 2018-02-26 (+7d) |  |  |  |
| 52 | PLIEGO DE CONDICIONES | 2018-02-06 → 2018-02-13 (+7d) | 2018-02-08 → 2018-02-15 (+7d) |  |  |  |
| 53 | PRESUPUESTO | 2018-02-06 → 2018-02-13 (+7d) | 2018-02-08 → 2018-02-15 (+7d) |  |  |  |
| 54 | ESTUDIO DE SEGURIDAD Y SALUD | 2018-02-06 → 2018-02-13 (+7d) | 2018-02-19 → 2018-02-26 (+7d) |  |  |  |
| 55 | Entrega del proyecto | 2018-02-19 → 2018-02-26 (+7d) | 2018-02-19 → 2018-02-26 (+7d) |  |  |  |

## Version 7 (saved 2017-03-24)

Note of the change: Asignacion recursos (sobreasignaciones)

Last finish stays 2018-02-26.

Changed:

| ID | Task | Other |
| --- | --- | --- |
| 3 | INICIO | resources none → ADMINISTRATIVO |
| 4 | TERMINOS DE REFERENCIA. Objetivos. Condicionantes del Promotor | resources none → DIRECTOR PROYECTO [25%]; INGENIERO AGRONOMO [25%]; ECONOMISTA [50%]; SOCIOLOGO [25%]; INGENIERO EN MEDIOAMBIENTE [25%] |
| 5 | FINANCIACION | resources none → DIRECTOR PROYECTO [15%]; INGENIERO AGRONOMO [25%]; ECONOMISTA [50%]; SOCIOLOGO [25%] |
| 6 | COMITÉ DE COORDINACION. Constitución y organización | resources none → DIRECTOR PROYECTO [25%] |
| 7 | EQUIPO DE FORMULACION. Recursos humanos y técnicos | resources none → DIRECTOR PROYECTO [25%]; ECONOMISTA [20%]; SOCIOLOGO [10%]; INGENIERO EN MEDIOAMBIENTE [10%]; INGENIERO AGRONOMO [10%]; ADMINISTRATIVO [10%] |
| 8 | METODOLOGIA Y PLAN DE TRABAJO | resources none → INGENIERO AGRONOMO [50%]; DIRECTOR PROYECTO [50%]; ECONOMISTA; SOCIOLOGO [50%]; INGENIERO EN MEDIOAMBIENTE [50%]; ADMINISTRATIVO [50%] |
| 9 | DOC. Nº1: Fin P.F. | resources none → DIRECTOR PROYECTO [50%]; ECONOMISTA [50%]; SOCIOLOGO [20%]; INGENIERO EN MEDIOAMBIENTE [20%]; INGENIERO AGRONOMO [20%]; ADMINISTRATIVO |
| 10 | Entrega al PROMOTOR. Doc. nº1 | resources none → DIRECTOR PROYECTO [50%] |
| 11 | SEMINARIO DE LANZAMIENTO DEL PROYECTO | resources none → DIRECTOR PROYECTO; ECONOMISTA; SOCIOLOGO; INGENIERO EN MEDIOAMBIENTE; INGENIERO AGRONOMO; ADMINISTRATIVO |
| 14 | POLITICAS Y PROGRAMAS | resources none → DIRECTOR PROYECTO [20%]; INGENIERO AGRONOMO [50%]; ECONOMISTA [40%]; ADMINISTRATIVO [20%]; INGENIERO EN MEDIOAMBIENTE [20%] |
| 15 | MARCO LEGAL | resources none → DIRECTOR PROYECTO [20%]; INGENIERO AGRONOMO [20%]; ADMINISTRATIVO [50%]; ECONOMISTA [40%] |
| 16 | BASES DE DATOS EXISTENTES | resources none → DIRECTOR PROYECTO [20%]; INGENIERO AGRONOMO [50%] |
| 18 | ANALISIS DE RECURSOS NATURALES. INVENTARIO AMBIENTAL | resources none → INGENIERO EN MEDIOAMBIENTE; INGENIERO AGRONOMO [50%]; ECONOMISTA [40%]; ADMINISTRATIVO [20%]; EXPERTO GIS [50%] |
| 19 | INFRAESTRUCTURAS Y SERVICIOS | resources none → INGENIERO AGRONOMO; SOCIOLOGO [50%]; DIRECTOR PROYECTO [10%]; ADMINISTRATIVO [25%] |
| 20 | ANALISIS DE SECTORES PRODUCTIVOS | resources none → DIRECTOR PROYECTO [20%]; ECONOMISTA; INGENIERO AGRONOMO [50%]; ADMINISTRATIVO [50%] |
| 21 | ANALISIS POBLACIONAL | resources none → SOCIOLOGO; INGENIERO AGRONOMO [25%]; ADMINISTRATIVO [25%] |
| 22 | SISTEMA GENERAL TERRITORIAL DE INFORMACION | resources none → SOCIOLOGO; INGENIERO AGRONOMO [25%]; ADMINISTRATIVO [25%]; EXPERTO GIS |
| 24 | IDENTIFICACIÓN DE AGENTES Y TIPOLOGIA | resources none → DIRECTOR PROYECTO [50%]; SOCIOLOGO; INGENIERO AGRONOMO [50%]; ADMINISTRATIVO [25%] |
| 25 | ANALISIS DE LA PARTICIPACIÓN: ENCUESTA CON LOS AGENTES | resources none → DIRECTOR PROYECTO [50%]; SOCIOLOGO; INGENIERO AGRONOMO [50%]; ADMINISTRATIVO [25%] |
| 26 | TALLER DE PARTICIPACIÓN AGENTES PUBLICOS | resources none → SOCIOLOGO; INGENIERO AGRONOMO [50%]; ADMINISTRATIVO [50%]; DIRECTOR PROYECTO [15%] |
| 27 | ANALISIS PROSPECTIVO "SIN" | resources none → INGENIERO AGRONOMO [25%]; ECONOMISTA [50%]; SOCIOLOGO [25%]; INGENIERO EN MEDIOAMBIENTE [25%]; DIRECTOR PROYECTO [15%] |
| 28 | INFORME DE PARTICIPACION: Problemas, necesidades, oportunidades | resources none → DIRECTOR PROYECTO [30%]; INGENIERO AGRONOMO [25%]; ECONOMISTA [50%]; SOCIOLOGO [25%]; INGENIERO EN MEDIOAMBIENTE [25%]; ADMINISTRATIVO [50%] |
| 29 | PRESENTACIÓN Y VALIDACION DE CONCLUSIONES | resources none → DIRECTOR PROYECTO [25%]; INGENIERO AGRONOMO [10%]; ECONOMISTA [20%]; SOCIOLOGO [10%]; ADMINISTRATIVO [25%] |
| 30 | CONCLUSIONES Y Doc. Nº2. Presentación al PROMOTOR | resources none → DIRECTOR PROYECTO [50%]; INGENIERO AGRONOMO [25%]; ADMINISTRATIVO; ECONOMISTA [50%]; INGENIERO EN MEDIOAMBIENTE [20%] |
| 33 | OBJETIVOS Y METAS | resources none → DIRECTOR PROYECTO; INGENIERO AGRONOMO [50%] |
| 34 | ALTERNATIVA ESTRATEGICAS: ANÁLISIS Y SELECCIÓN | resources none → DIRECTOR PROYECTO [50%]; INGENIERO AGRONOMO; ECONOMISTA; INGENIERO EN MEDIOAMBIENTE [50%] |
| 35 | FORMULACION DE LOS COMPONENTES | resources none → INGENIERO AGRONOMO [50%]; ECONOMISTA [50%]; INGENIERO EN MEDIOAMBIENTE [50%] |
| 36 | DISEÑO DE LA ORGANIZACIÓN | resources none → INGENIERO AGRONOMO [50%]; ECONOMISTA [50%]; INGENIERO EN MEDIOAMBIENTE [50%] |
| 37 | SISTEMA DE SEGUIMIENTO Y EVALUACION. Programación de la ejecución | resources none → INGENIERO AGRONOMO [50%]; ECONOMISTA [50%]; INGENIERO EN MEDIOAMBIENTE [50%] |
| 38 | PRESUPUESTACION | resources none → INGENIERO AGRONOMO [50%]; ECONOMISTA [50%]; INGENIERO EN MEDIOAMBIENTE [50%] |
| 39 | Doc. Nº 3. Entrega al PROMOTOR | resources none → DIRECTOR PROYECTO |
| 42 | EVALUACION ECONOMICO-FINANCIERA | resources none → DIRECTOR PROYECTO [25%]; INGENIERO AGRONOMO [50%]; ECONOMISTA |
| 43 | EVALUACION SOCIAL Y CULTURAL | resources none → DIRECTOR PROYECTO [25%]; INGENIERO AGRONOMO [50%]; ECONOMISTA [15%]; SOCIOLOGO |
| 44 | EVALUACION AMBIENTAL | resources none → DIRECTOR PROYECTO [25%]; INGENIERO AGRONOMO [50%]; ECONOMISTA [15%]; INGENIERO EN MEDIOAMBIENTE |
| 45 | EVALUACION DE RIESGOS, SEGURIDAD Y SALUD DEL PROYECTO | resources none → DIRECTOR PROYECTO [25%]; INGENIERO AGRONOMO [50%]; ECONOMISTA [15%]; TECNICOS DE APOYO |
| 49 | MEMORIA | resources none → INGENIERO AGRONOMO [50%]; ECONOMISTA [25%]; DIRECTOR PROYECTO [10%]; TECNICOS DE APOYO |
| 50 | ANEJOS A LA MEMORIA | resources none → INGENIERO AGRONOMO [50%]; ECONOMISTA [25%]; DIRECTOR PROYECTO [10%]; INGENIERO EN MEDIOAMBIENTE [50%]; ADMINISTRATIVO [50%]; TECNICOS DE APOYO |
| 51 | PLANOS | resources none → INGENIERO AGRONOMO [50%]; ECONOMISTA [25%]; DIRECTOR PROYECTO [10%]; INGENIERO EN MEDIOAMBIENTE [50%]; ADMINISTRATIVO [50%]; TECNICOS DE APOYO; EXPERTO GIS |
| 52 | PLIEGO DE CONDICIONES | resources none → INGENIERO AGRONOMO [50%]; ECONOMISTA [25%]; DIRECTOR PROYECTO [10%]; INGENIERO EN MEDIOAMBIENTE [50%]; ADMINISTRATIVO [50%]; TECNICOS DE APOYO |
| 53 | PRESUPUESTO | resources none → ECONOMISTA [25%]; INGENIERO AGRONOMO [50%]; DIRECTOR PROYECTO [10%]; INGENIERO EN MEDIOAMBIENTE [50%]; ADMINISTRATIVO [50%]; TECNICOS DE APOYO |
| 54 | ESTUDIO DE SEGURIDAD Y SALUD | resources none → INGENIERO AGRONOMO [50%]; ECONOMISTA [25%]; DIRECTOR PROYECTO [10%]; INGENIERO EN MEDIOAMBIENTE [50%]; ADMINISTRATIVO [50%]; TECNICOS DE APOYO |

## Version 8 (saved 2017-03-26)

Note of the change: Inserccion del calendario

Last finish 2018-02-26 → 2018-01-26 (-31d).

Changed:

| ID | Task | Start | Finish | Duration | Total float |
| --- | --- | --- | --- | --- | --- |
| 1 | **TOTAL PROYECTO** | 2017-03-24 → 2017-02-20 (-32d) | 2018-02-26 → 2018-01-26 (-31d) | 242d → 233d |  |
| 2 | **FASE 1: PREPARACION PARA LA FORMULACION** | 2017-03-24 → 2017-02-20 (-32d) | 2017-05-05 → 2017-04-03 (-32d) | 31d → 30d | 0d → 3d |
| 3 | INICIO | 2017-03-24 → 2017-02-20 (-32d) | 2017-03-24 → 2017-02-20 (-32d) |  | 0d → 3d |
| 4 | TERMINOS DE REFERENCIA. Objetivos. Condicionantes del Promotor | 2017-03-24 → 2017-02-20 (-32d) | 2017-04-06 → 2017-03-03 (-34d) |  | 5d → 7d |
| 5 | FINANCIACION | 2017-03-24 → 2017-02-20 (-32d) | 2017-04-03 → 2017-02-28 (-34d) |  | 8d → 10d |
| 6 | COMITÉ DE COORDINACION. Constitución y organización | 2017-03-24 → 2017-02-20 (-32d) | 2017-03-30 → 2017-02-24 (-34d) |  | 0d → 2d |
| 7 | EQUIPO DE FORMULACION. Recursos humanos y técnicos | 2017-03-31 → 2017-02-27 (-32d) | 2017-04-20 → 2017-03-17 (-34d) |  | 0d → 2d |
| 8 | METODOLOGIA Y PLAN DE TRABAJO | 2017-04-14 → 2017-03-13 (-32d) | 2017-04-27 → 2017-03-24 (-34d) |  | 0d → 3d |
| 9 | DOC. Nº1: Fin P.F. | 2017-04-28 → 2017-03-27 (-32d) | 2017-05-04 → 2017-03-31 (-34d) |  | 0d → 3d |
| 10 | Entrega al PROMOTOR. Doc. nº1 | 2017-05-04 → 2017-03-31 (-34d) | 2017-05-04 → 2017-03-31 (-34d) |  | 0d → 3d |
| 11 | SEMINARIO DE LANZAMIENTO DEL PROYECTO | 2017-05-05 → 2017-04-03 (-32d) | 2017-05-05 → 2017-04-03 (-32d) |  | 0d → 3d |
| 12 | **FASE 2: ANALISIS Y DIAGNOSTICO** | 2017-05-08 → 2017-04-04 (-34d) | 2017-09-14 → 2017-08-15 (-30d) | 94d → 92d | 0d → 3d |
| 13 | **ANALISIS ANTECEDENTES** | 2017-05-08 → 2017-04-04 (-34d) | 2017-05-26 → 2017-04-24 (-32d) | 15d → 13d | 0d → 3d |
| 14 | POLITICAS Y PROGRAMAS | 2017-05-08 → 2017-04-04 (-34d) | 2017-05-19 → 2017-04-17 (-32d) |  | 176d → 170d |
| 15 | MARCO LEGAL | 2017-05-08 → 2017-04-04 (-34d) | 2017-05-26 → 2017-04-24 (-32d) |  | 171d → 167d |
| 16 | BASES DE DATOS EXISTENTES | 2017-05-08 → 2017-04-04 (-34d) | 2017-05-16 → 2017-04-12 (-34d) |  | 0d → 1d |
| 17 | **ANALISIS DEL AREA DEL PROYECTO** | 2017-05-17 → 2017-04-13 (-34d) | 2017-09-05 → 2017-07-20 (-47d) | 80d → 67.5d | 0d → 1d |
| 18 | ANALISIS DE RECURSOS NATURALES. INVENTARIO AMBIENTAL | 2017-05-17 → 2017-04-13 (-34d) | 2017-07-04 → 2017-05-18 (-47d) |  | 124d → 130.5d |
| 19 | INFRAESTRUCTURAS Y SERVICIOS | 2017-07-05 → 2017-05-18 (-48d) | 2017-08-01 → 2017-06-15 (-47d) |  | 124d → 130.5d |
| 20 | ANALISIS DE SECTORES PRODUCTIVOS | 2017-08-02 → 2017-06-15 (-48d) | 2017-09-05 → 2017-07-20 (-47d) |  | 124d → 128.5d |
| 21 | ANALISIS POBLACIONAL | 2017-05-17 → 2017-04-13 (-34d) | 2017-06-13 → 2017-05-10 (-34d) |  | 184d → 177d |
| 22 | SISTEMA GENERAL TERRITORIAL DE INFORMACION | 2017-05-17 → 2017-04-13 (-34d) | 2017-06-14 → 2017-05-04 (-41d) |  | 0d → 1d |
| 23 | **ANALISIS DE AGENTES Y PARTICIPACION** | 2017-05-24 → 2017-04-24 (-30d) | 2017-09-14 → 2017-08-15 (-30d) | 82d → 80d | 0d → 1d |
| 24 | IDENTIFICACIÓN DE AGENTES Y TIPOLOGIA | 2017-05-24 → 2017-04-24 (-30d) | 2017-06-06 → 2017-05-05 (-32d) |  | 0d → 1d |
| 25 | ANALISIS DE LA PARTICIPACIÓN: ENCUESTA CON LOS AGENTES | 2017-06-07 → 2017-05-08 (-30d) | 2017-08-29 → 2017-07-28 (-32d) |  | 0d → 1d |
| 26 | TALLER DE PARTICIPACIÓN AGENTES PUBLICOS | 2017-06-21 → 2017-05-22 (-30d) | 2017-06-21 → 2017-05-22 (-30d) |  | 43d → 44d |
| 27 | ANALISIS PROSPECTIVO "SIN" | 2017-06-22 → 2017-05-23 (-30d) | 2017-06-29 → 2017-05-30 (-30d) |  | 43d → 44d |
| 28 | INFORME DE PARTICIPACION: Problemas, necesidades, oportunidades | 2017-08-30 → 2017-07-31 (-30d) | 2017-09-12 → 2017-08-11 (-32d) |  | 0d → 1d |
| 29 | PRESENTACIÓN Y VALIDACION DE CONCLUSIONES | 2017-09-13 → 2017-08-14 (-30d) | 2017-09-14 → 2017-08-15 (-30d) |  | 0d → 1d |
| 30 | CONCLUSIONES Y Doc. Nº2. Presentación al PROMOTOR | 2017-09-14 → 2017-08-15 (-30d) | 2017-09-14 → 2017-08-15 (-30d) |  | 0d → 1d |
| 31 | Doc. nº2. REVISIÓN POR EL PROMOTOR | 2017-09-14 → 2017-08-15 (-30d) | 2017-09-14 → 2017-08-15 (-30d) |  | 0d → 1d |
| 32 | **FASE 3: DISEÑO DEL PROYECTO** | 2017-09-15 → 2017-08-16 (-30d) | 2018-01-22 → 2017-12-22 (-31d) | 92d → 88d | 0d → 1d |
| 33 | OBJETIVOS Y METAS | 2017-09-15 → 2017-08-16 (-30d) | 2017-09-15 → 2017-08-16 (-30d) |  | 0d → 1d |
| 34 | ALTERNATIVA ESTRATEGICAS: ANÁLISIS Y SELECCIÓN | 2017-09-18 → 2017-08-17 (-32d) | 2017-09-26 → 2017-08-25 (-32d) |  | 0d → 1d |
| 35 | FORMULACION DE LOS COMPONENTES | 2017-09-27 → 2017-08-28 (-30d) | 2017-12-19 → 2017-11-17 (-32d) |  | 0d → 1d |
| 36 | DISEÑO DE LA ORGANIZACIÓN | 2017-12-20 → 2017-11-20 (-30d) | 2018-01-02 → 2017-12-01 (-32d) |  | 0d → 1d |
| 37 | SISTEMA DE SEGUIMIENTO Y EVALUACION. Programación de la ejecución | 2018-01-03 → 2017-12-04 (-30d) | 2018-01-11 → 2017-12-12 (-30d) |  | 32d → 29d |
| 38 | PRESUPUESTACION | 2018-01-03 → 2017-12-04 (-30d) | 2018-01-08 → 2017-12-07 (-32d) |  |  |
| 39 | Doc. Nº 3. Entrega al PROMOTOR | 2018-01-08 → 2017-12-07 (-32d) | 2018-01-08 → 2017-12-07 (-32d) |  |  |
| 40 | Doc. Nº 3. REVISION POR EL PROMOTOR | 2018-01-09 → 2017-12-11 (-29d) | 2018-01-22 → 2017-12-22 (-31d) |  |  |
| 41 | **FASE 4: EVALUACION MULTICRITERIO** | 2018-01-23 → 2017-12-25 (-29d) | 2018-02-12 → 2018-01-12 (-31d) | 15d → 13d |  |
| 42 | EVALUACION ECONOMICO-FINANCIERA | 2018-01-23 → 2017-12-25 (-29d) | 2018-02-05 → 2018-01-05 (-31d) |  |  |
| 43 | EVALUACION SOCIAL Y CULTURAL | 2018-01-23 → 2017-12-25 (-29d) | 2018-02-05 → 2018-01-05 (-31d) |  |  |
| 44 | EVALUACION AMBIENTAL | 2018-01-23 → 2017-12-25 (-29d) | 2018-02-05 → 2018-01-05 (-31d) |  |  |
| 45 | EVALUACION DE RIESGOS, SEGURIDAD Y SALUD DEL PROYECTO | 2018-01-23 → 2017-12-25 (-29d) | 2018-02-05 → 2018-01-05 (-31d) |  | 15d → 13d |
| 46 | Entrega Doc. nº 4. VIABILIDAD Y SOSTENIBLIDAD | 2018-02-05 → 2018-01-05 (-31d) | 2018-02-05 → 2018-01-05 (-31d) |  |  |
| 47 | Revisión Doc. nº 4 | 2018-02-06 → 2018-01-08 (-29d) | 2018-02-12 → 2018-01-12 (-31d) |  |  |
| 48 | **FASE 5: DOCUMENTACION** | 2018-02-13 → 2018-01-15 (-29d) | 2018-02-26 → 2018-01-26 (-31d) |  |  |
| 49 | MEMORIA | 2018-02-13 → 2018-01-15 (-29d) | 2018-02-20 → 2018-01-22 (-29d) |  |  |
| 50 | ANEJOS A LA MEMORIA | 2018-02-13 → 2018-01-15 (-29d) | 2018-02-26 → 2018-01-26 (-31d) |  |  |
| 51 | PLANOS | 2018-02-13 → 2018-01-15 (-29d) | 2018-02-26 → 2018-01-24 (-33d) |  | 0d → 2.5d |
| 52 | PLIEGO DE CONDICIONES | 2018-02-13 → 2018-01-15 (-29d) | 2018-02-15 → 2018-01-17 (-29d) |  |  |
| 53 | PRESUPUESTO | 2018-02-13 → 2018-01-15 (-29d) | 2018-02-15 → 2018-01-17 (-29d) |  |  |
| 54 | ESTUDIO DE SEGURIDAD Y SALUD | 2018-02-13 → 2018-01-15 (-29d) | 2018-02-26 → 2018-01-26 (-31d) |  |  |
| 55 | Entrega del proyecto | 2018-02-26 → 2018-01-26 (-31d) | 2018-02-26 → 2018-01-26 (-31d) |  |  |
